# WBS PROGETTONE GROSSO PIU GROSSO 2015

Schedule from MS Project, 2015-11-26 to 2016-04-23, status date 2015-11-28, A marks actual dates.

## Calendars

- Standard: Mon-Sat 09:00-13:00, 14:00-18:00; Sun off.

## Resources

| Resource |
| --- |
| Adrian Kalkowski (Programmer, Game Designer) |
| Gavioli Federico (Lead Programmer, PM) |
| Costi |

## Schedule

| ID | WBS | Task | Type | Duration | Start | Finish | Predecessors | Complete | Remaining | Total slack | Free slack | Resources | Work | Actual work |
| --- | --- | --- | --- | --- | --- | --- | --- | --- | --- | --- | --- | --- | --- | --- |
| 1 | 1 | **PROGETTONE** |  | 129d? | 2015-11-26 A | 2016-04-23 |  | 5% | 122.32d? | 0d |  |  | 2000h | 132h |
| 2 | 1.1 | **AVVIO** |  | 8d? | 2015-11-26 A | 2015-12-04 |  | 50% | 4d? | 3d | 0d |  | 128h | 72h |
| 3 | 1.1.1 | Analisi del progetto |  | 3d | 2015-11-26 A | 2015-11-28 A |  | 100% |  |  |  | Adrian Kalkowski (Programmer, Game Designer); Gavioli Federico (Lead Programmer, PM) | 48h | 48h |
| 4 | 1.1.2 | Studio di fattibilità |  | 2d | 2015-11-30 | 2015-12-01 | 3 |  |  | 4d | 1d | Adrian Kalkowski (Programmer, Game Designer) [50%]; Gavioli Federico (Lead Programmer, PM) [50%] | 16h |  |
| 5 | 1.1.3 | Compilazione documento requisiti |  | 2d | 2015-11-30 A | 2015-12-01 | 3 | 50% | 1d | 4d | 1d | Adrian Kalkowski (Programmer, Game Designer) [50%]; Gavioli Federico (Lead Programmer, PM) [50%] | 16h | 8h |
| 6 | 1.1.4 | Definizione ambienti di sviluppo |  | 1d | 2015-12-02 A | 2015-12-02 A | 4 | 100% |  |  |  | Adrian Kalkowski (Programmer, Game Designer); Gavioli Federico (Lead Programmer, PM) | 16h | 16h |
| 7 | 1.1.5 | Aggiornamento WBS e OBS |  | 2d? | 2015-12-03 | 2015-12-04 | 3, 4, 5, 6 |  |  | 3d |  | Adrian Kalkowski (Programmer, Game Designer); Gavioli Federico (Lead Programmer, PM) | 32h |  |
| 8 | 1.2 | **PROGETTAZIONE** |  | 13d? | 2015-12-05 A | 2015-12-19 |  | 29% | 9.25d? | 0d |  |  | 168h | 60h |
| 9 | 1.2.1 | Definizione specifiche progetto |  | 5d | 2015-12-05 A | 2015-12-10 | 2 | 75% | 1.25d | 0d |  | Adrian Kalkowski (Programmer, Game Designer); Gavioli Federico (Lead Programmer, PM) | 80h | 60h |
| 10 | 1.2.2 | Organizzazione gameplay |  | 3d | 2015-12-11 | 2015-12-14 | 9 |  |  | 5d |  | Adrian Kalkowski (Programmer, Game Designer); Gavioli Federico (Lead Programmer, PM) | 48h |  |
| 11 | 1.2.3 | Definizione specifiche controller | milestone | 0d | 2015-12-10 | 2015-12-10 | 9 |  |  | 8d |  |  |  |  |
| 12 | 1.2.4 | Concept mappe, personaggi e storia |  | 5d? | 2015-12-15 | 2015-12-19 | 2FS+2d, 9 |  |  | 0d |  | Adrian Kalkowski (Programmer, Game Designer) | 40h |  |
| 13 | 1.3 | **ESECUZIONE** |  | 87d? | 2015-12-21 | 2016-03-30 |  |  |  | 0d |  |  | 1368h |  |
| 14 | 1.3.1 | **LOGICA APPLICATIVA APPLICAZIONE** |  | 73d | 2015-12-21 | 2016-03-14 |  |  |  | 0d |  |  | 1032h |  |
| 15 | 1.3.1.1 | Esplorazione funzionalità ambiente e librerie di sviluppo |  | 7d | 2015-12-21 | 2015-12-28 | 8 |  |  | 0d |  | Adrian Kalkowski (Programmer, Game Designer); Gavioli Federico (Lead Programmer, PM) | 112h |  |
| 16 | 1.3.1.2 | Programmazione movimento |  | 14d | 2015-12-29 | 2016-01-13 | 15 |  |  | 0d |  | Gavioli Federico (Lead Programmer, PM) | 112h |  |
| 17 | 1.3.1.3 | Programmazione movimenti di oggetti estranei al giocatore |  | 10d | 2016-01-14 | 2016-01-25 | 16 |  |  | 0d |  | Gavioli Federico (Lead Programmer, PM) | 80h |  |
| 18 | 1.3.1.4 | Disegni per scenari, animazioni e oggetti |  | 21d | 2016-01-01 | 2016-01-25 | 8 |  |  | 60d |  | Adrian Kalkowski (Programmer, Game Designer) | 168h |  |
| 19 | 1.3.1.5 | Gestione delle collisioni (proiettili) |  | 14d | 2016-01-26 | 2016-02-10 | 16, 17 |  |  | 0d |  | Adrian Kalkowski (Programmer, Game Designer); Gavioli Federico (Lead Programmer, PM) | 224h |  |
| 20 | 1.3.1.6 | Gestione delle collisioni (vita e statistiche generali) |  | 14d | 2016-02-11 | 2016-02-26 | 16, 17, 19 |  |  | 0d |  | Adrian Kalkowski (Programmer, Game Designer); Gavioli Federico (Lead Programmer, PM) | 224h |  |
| 21 | 1.3.1.7 | Programmazione IA |  | 14d | 2016-02-27 | 2016-03-14 | 20 |  |  | 0d |  | Gavioli Federico (Lead Programmer, PM) | 112h |  |
| 22 | 1.3.2 | **CONTROLLER** |  | 1d? | 2016-03-15 | 2016-03-15 |  |  |  | 18d |  |  |  |  |
| 23 | 1.3.2.1 | Acquisto materiali |  | 1d? | 2016-03-15 | 2016-03-15 | 14 |  |  | 18d |  |  |  |  |
| 24 | 1.3.2.2 | Assemblaggio |  | 1d? | 2016-03-15 | 2016-03-15 | 14 |  |  | 18d |  |  |  |  |
| 25 | 1.3.2.3 | Drivers e test |  | 1d? | 2016-03-15 | 2016-03-15 | 14 |  |  | 18d |  |  |  |  |

| ID | WBS | Task | Duration | Start | Finish | Predecessors | Total slack | Free slack | Resources | Work |
| --- | --- | --- | --- | --- | --- | --- | --- | --- | --- | --- |
| 26 | 1.3.3 | **EXTRA** | 28d | 2016-02-27 | 2016-03-30 |  | 5d |  |  | 336h |
| 27 | 1.3.3.1 | Autenticazione e registrazione su sito web per credenziali e statistiche personali | 7d | 2016-02-27 | 2016-03-05 | 20 | 19d | 0d | Adrian Kalkowski (Programmer, Game Designer) | 56h |
| 28 | 1.3.3.2 | Gestione Database con statistiche giocatore | 7d | 2016-03-07 | 2016-03-14 | 27 | 19d |  | Adrian Kalkowski (Programmer, Game Designer) | 56h |
| 29 | 1.3.3.3 | Modalità cooperativa | 14d | 2016-03-15 | 2016-03-30 | 21 | 0d |  | Adrian Kalkowski (Programmer, Game Designer); Gavioli Federico (Lead Programmer, PM) | 224h |
| 30 | 1.4 | **CHIUSURA** | 21d? | 2016-03-31 | 2016-04-23 | 13 | 0d |  |  | 336h |
| 31 | 1.4.1 | Testing Logica Applicativa | 14d | 2016-03-31 | 2016-04-15 | 14 | 5d | 0d | Adrian Kalkowski (Programmer, Game Designer); Gavioli Federico (Lead Programmer, PM) | 224h |
| 32 | 1.4.2 | Testing Sito | 2d? | 2016-04-16 | 2016-04-18 | 31 | 5d |  | Adrian Kalkowski (Programmer, Game Designer); Gavioli Federico (Lead Programmer, PM) | 32h |
| 33 | 1.4.3 | Testing coop | 5d | 2016-04-19 | 2016-04-23 | 29 | 0d |  | Adrian Kalkowski (Programmer, Game Designer); Gavioli Federico (Lead Programmer, PM) | 80h |
